# CRO-CronogramaV3

Schedule from MS Project, 2020-06-04 to 2020-07-17, costs in R$, A marks actual dates.

## Calendars

- Padrão: Mon-Fri 09:00-12:00, 13:00-18:00; Sat-Sun off.

## Resources

| Resource | Rate |
| --- | --- |
| José | 100 |
| João | 100 |
| Jubeto | 100 |
| Cliente |  |
| GP Externo | 200 |
| Fernando | 100 |

## Schedule

| ID | WBS | Task | Type | Duration | Start | Finish | Predecessors | Complete | Remaining | Baseline start | Baseline finish | Baseline duration | Total slack | Resources | Work | Actual work | Cost | Baseline cost | Actual cost |
| --- | --- | --- | --- | --- | --- | --- | --- | --- | --- | --- | --- | --- | --- | --- | --- | --- | --- | --- | --- |
| 1 | 1 | **Projeto Oficina Mecânica** |  | 31.28d | 2020-06-04 A | 2020-07-17 |  | 27% | 22.92d | 2020-06-04 | 2020-07-13 | 27d | 0d |  | 222h | 59.25h | 22,249.96 | 25,500 | 5,974.96 |
| 2 | 1.1 | **Prospecção** |  | 3.06d | 2020-06-04 A | 2020-06-09 |  | 88% | 0.38d | 2020-06-04 | 2020-06-09 | 3d | 28.22d |  | 10.5h | 9.25h | 1,100 | 1,300 | 975 |
| 3 | 1.1.1 | **PETEC** |  | 1.38d | 2020-06-04 A | 2020-06-05 A |  | 100% |  | 2020-06-04 | 2020-06-05 | 1.38d |  |  | 5.5h | 5.5h | 550 | 700 | 550 |
| 4 | 1.1.1.1 | Estudar Dominio de Aplicação |  | 0.12d | 2020-06-04 A | 2020-06-04 A |  | 100% |  | 2020-06-04 | 2020-06-04 | 0.12d |  | José | 1h | 1h | 100 | 100 | 100 |
| 5 | 1.1.1.2 | Reunir-se com Fornecedor de Requisitos |  | 0.12d | 2020-06-04 A | 2020-06-04 A | 4 | 100% |  | 2020-06-04 | 2020-06-04 | 0.12d |  | José | 1h | 1h | 100 | 100 | 100 |
| 6 | 1.1.1.3 | Redigir PETEC |  | 0.38d | 2020-06-04 A | 2020-06-05 A | 5 | 100% |  | 2020-06-04 | 2020-06-05 | 0.5d |  | João | 3h | 3h | 300 | 400 | 300 |
| 7 | 1.1.1.4 | Revisar Proposta Técnica |  | 0.06d | 2020-06-05 A | 2020-06-05 A | 6 | 100% |  | 2020-06-05 | 2020-06-05 | 0.12d |  | Jubeto | 0.5h | 0.5h | 50 | 100 | 50 |
| 8 | 1.1.1.5 | Aprovar PTEC | milestone | 0d | 2020-06-05 A | 2020-06-05 A | 7 | 100% |  | 2020-06-05 | 2020-06-05 | 0d |  | Cliente |  |  |  |  |  |
| 9 | 1.1.2 | **Est. Prel. Tam.** |  | 0.06d | 2020-06-08 A | 2020-06-08 A |  | 100% |  | 2020-06-08 | 2020-06-08 | 0.12d |  |  | 1.5h | 1.5h | 200 | 300 | 200 |
| 10 | 1.1.2.1 | Estimar Tamanho do Projeto |  | 0.06d | 2020-06-08 A | 2020-06-08 A | 7 | 100% |  | 2020-06-08 | 2020-06-08 | 0.06d |  | João; Jubeto | 1h | 1h | 100 | 100 | 100 |
| 11 | 1.1.2.2 | Revisar Estimativa de Tamanho do projeto |  | 0.06d | 2020-06-08 A | 2020-06-08 A | 10 | 100% |  | 2020-06-08 | 2020-06-08 | 0.12d |  | GP Externo | 0.5h | 0.5h | 100 | 200 | 100 |
| 12 | 1.1.3 | **Est. Prel. Cronograma e Orçamento** |  | 0.94d | 2020-06-08 A | 2020-06-09 |  | 64% | 0.33d | 2020-06-08 | 2020-06-09 | 0.88d | 28.22d |  | 3.5h | 2.25h | 350 | 300 | 225 |
| 13 | 1.1.3.1 | Elaborar Cronograma e Orçamento Preliminares |  | 0.25d | 2020-06-08 A | 2020-06-08 A | 9 | 100% |  | 2020-06-08 | 2020-06-08 | 0.25d |  | Jubeto | 2h | 2h | 200 | 200 | 200 |
| 14 | 1.1.3.2 | Revisar Cronograma e Orçamento Preliminares |  | 0.19d | 2020-06-09 A | 2020-06-09 | 13 | 17% | 0.16d | 2020-06-09 | 2020-06-09 | 0.12d | 28.22d | Fernando | 1.5h | 0.25h | 150 | 100 | 25 |
| 15 | 1.2 | **Análise** |  | 11.06d | 2020-06-09 A | 2020-06-24 |  | 94% | 0.71d | 2020-06-09 | 2020-06-24 | 11.25d | 17.22d |  | 27h | 25.5h | 2,699.96 | 4,200 | 2,549.96 |
| 16 | 1.2.1 | **Documento de Requisitos** |  | 8.25d | 2020-06-09 A | 2020-06-19 |  | 92% | 0.67d | 2020-06-09 | 2020-06-19 | 8.25d | 20.03d |  | 21h | 19.5h | 2,099.96 | 3,000 | 1,949.96 |
| 17 | 1.2.1.1 | Reunir-se com Cliente |  | 0.25d | 2020-06-09 A | 2020-06-09 A | 14 | 100% |  | 2020-06-09 | 2020-06-10 | 0.62d |  | José | 2h | 2h | 200 | 500 | 200 |
| 18 | 1.2.1.2 | Elaborar DRE |  | 1.87d | 2020-06-10 A | 2020-06-16 A | 17 | 100% |  | 2020-06-10 | 2020-06-17 | 2.5d |  | João | 15h | 15h | 1,499.96 | 2,000 | 1,499.96 |
| 19 | 1.2.1.3 | Revisar DRE |  | 0.8d | 2020-06-17 A | 2020-06-19 | 18 | 70% | 0.24d | 2020-06-17 | 2020-06-19 | 1.12d | 20.28d | Jubeto | 4h | 2.5h | 400 | 500 | 250 |
| 20 | 1.2.1.4 | Submeter DRE Para Aprovação do Cliente | milestone | 0d | 2020-06-19 A | 2020-06-19 A | 19 | 100% |  | 2020-06-19 | 2020-06-19 | 0d |  | Jubeto |  |  |  |  |  |
| 21 | 1.2.2 | **MRB** |  | 2.81d | 2020-06-19 A | 2020-06-24 A |  | 100% |  | 2020-06-19 | 2020-06-24 | 3d |  |  | 6h | 6h | 600 | 1,200 | 600 |
| 22 | 1.2.2.1 | Elaborar MRB |  | 0.56d | 2020-06-19 A | 2020-06-22 A | 20 | 100% |  | 2020-06-19 | 2020-06-23 | 1.12d |  | José | 4.5h | 4.5h | 450 | 900 | 450 |
| 23 | 1.2.2.2 | Revisar MRB |  | 0.19d | 2020-06-23 A | 2020-06-24 A | 22 | 100% |  | 2020-06-23 | 2020-06-24 | 0.38d |  | Fernando | 1.5h | 1.5h | 150 | 300 | 150 |
| 24 | 1.3 | **Projeto** |  | 7d | 2020-06-24 A | 2020-07-03 |  | 69% | 2.15d | 2020-06-24 | 2020-07-06 | 8d | 10.03d |  | 8.5h | 4.5h | 850 | 1,000 | 450 |
| 25 | 1.3.1 | **Diagrama de Classes** |  | 5d | 2020-06-24 A | 2020-07-01 A |  | 100% |  | 2020-06-24 | 2020-07-02 | 6d |  |  | 4.5h | 4.5h | 450 | 600 | 450 |
| 26 | 1.3.1.1 | Elaborar Diagrama de Classe |  | 0.75d | 2020-06-24 A | 2020-06-26 A | 23 | 100% |  | 2020-06-24 | 2020-06-26 | 1d |  | José [50%] | 3h | 3h | 300 | 400 | 300 |
| 27 | 1.3.1.2 | Revisar Diagrama de Classe |  | 1d | 2020-06-26 A | 2020-06-30 A | 26 | 100% |  | 2020-06-26 | 2020-06-30 | 1d |  | João [12.5%] | 1h | 1h | 100 | 100 | 100 |
| 28 | 1.3.1.3 | Atualizar MRB |  | 0.5d | 2020-06-30 A | 2020-07-01 A | 27 | 100% |  | 2020-06-30 | 2020-07-02 | 1d |  | José [12.5%] | 0.5h | 0.5h | 50 | 100 | 50 |

| ID | WBS | Task | Duration | Start | Finish | Predecessors | Complete | Remaining | Baseline start | Baseline finish | Baseline duration | Total slack | Free slack | Resources | Work | Actual work | Cost | Baseline cost | Actual cost |
| --- | --- | --- | --- | --- | --- | --- | --- | --- | --- | --- | --- | --- | --- | --- | --- | --- | --- | --- | --- |
| 29 | 1.3.2 | **Modelo Entidade Relacionamento** | 2d | 2020-07-01 | 2020-07-03 |  |  |  | 2020-07-02 | 2020-07-06 | 2d | 5.78d |  |  | 4h |  | 400 | 400 |  |
| 30 | 1.3.2.1 | Elaborar Mer | 0.5d | 2020-07-01 | 2020-07-02 | 28 |  |  | 2020-07-02 | 2020-07-03 | 0.5d | 5.78d | 0d | Jubeto | 3h |  | 300 | 300 |  |
| 31 | 1.3.2.2 | Revisar Mer | 0.5d | 2020-07-02 | 2020-07-03 | 30 |  |  | 2020-07-03 | 2020-07-06 | 0.5d | 10.03d |  | Fernando | 1h |  | 100 | 100 |  |
| 32 | 1.4 | **Planejamento** | 5.75d | 2020-07-02 | 2020-07-10 |  |  |  | 2020-07-03 | 2020-07-13 | 5.75d | 5.28d |  |  | 17h |  | 1,700 | 1,700 |  |
| 33 | 1.4.1 | Desenvolver Planejamento | 1.75d | 2020-07-02 | 2020-07-08 | 30 |  |  | 2020-07-03 | 2020-07-09 | 1.75d | 5.28d | 0d | Jubeto | 14h |  | 1,400 | 1,400 |  |
| 34 | 1.4.2 | Revisar Planejamento | 1d | 2020-07-08 | 2020-07-10 | 33 |  |  | 2020-07-09 | 2020-07-13 | 1d | 5.28d |  | José [37.5%] | 3h |  | 300 | 300 |  |
| 35 | 1.5 | **Desenvolvimento** | 31.28d | 2020-06-04 A | 2020-07-17 |  | 14% | 26.86d | 2020-06-04 | 2020-07-08 | 24d | 0d |  |  | 127h | 20h | 12,700 | 14,100 | 2,000 |
| 36 | 1.5.1 | **Release 01** | 17d | 2020-06-09 A | 2020-07-02 A |  | 100% |  | 2020-06-04 | 2020-07-07 | 23.12d |  |  |  | 20h | 20h | 2,000 | 5,100 | 2,000 |
| 37 | 1.5.1.1 | **Implementação** | 15.12d | 2020-06-09 A | 2020-06-30 A |  | 100% |  | 2020-06-04 | 2020-07-01 | 19.12d |  |  |  | 16h | 16h | 1,600 | 3,900 | 1,600 |
| 38 | 1.5.1.1.1 | **Implementar RFC01 – Manter Funcionários** | 10.25d | 2020-06-09 A | 2020-06-23 A |  | 100% |  | 2020-06-04 | 2020-06-24 | 14d |  |  |  | 8h | 8h | 800 | 1,300 | 800 |
| 39 | 1.5.1.1.1.1 | Implementar RF01 – Incluir funcionário | 0.25d | 2020-06-12 A | 2020-06-19 A |  | 100% |  | 2020-06-12 | 2020-06-24 | 0.38d |  |  | Jubeto | 2h | 2h | 200 | 300 | 200 |
| 40 | 1.5.1.1.1.2 | Implementar RF02 – Editar funcionário | 0.25d | 2020-06-22 A | 2020-06-22 A |  | 100% |  | 2020-06-22 | 2020-06-23 | 0.38d |  |  | Jubeto | 2h | 2h | 200 | 300 | 200 |
| 41 | 1.5.1.1.1.3 | Implementar RF03 – Consultar funcionário | 0.25d | 2020-06-23 A | 2020-06-23 A |  | 100% |  | 2020-06-23 | 2020-06-23 | 0.38d |  |  | Jubeto | 2h | 2h | 200 | 300 | 200 |
| 42 | 1.5.1.1.1.4 | Implementar RF04 – Remover funcionário | 0.25d | 2020-06-09 A | 2020-06-09 A |  | 100% |  | 2020-06-04 | 2020-06-05 | 1d |  |  | Jubeto | 2h | 2h | 200 | 400 | 200 |
| 43 | 1.5.1.1.2 | **Implementar RFC02 – Manter Clientes** | 13d | 2020-06-11 A | 2020-06-30 A |  | 100% |  | 2020-06-04 | 2020-07-01 | 18.87d |  |  |  | 8h | 8h | 800 | 1,300 | 800 |
| 44 | 1.5.1.1.2.1 | Implementar RF05 – Incluir clientes | 0.25d | 2020-06-24 A | 2020-06-26 A |  | 100% |  | 2020-06-24 | 2020-06-26 | 0.38d |  |  | José | 2h | 2h | 200 | 300 | 200 |
| 45 | 1.5.1.1.2.2 | Implementar RF06 – Editar cliente | 0.25d | 2020-06-26 A | 2020-06-29 A |  | 100% |  | 2020-06-26 | 2020-06-29 | 0.38d |  |  | José | 2h | 2h | 200 | 300 | 200 |
| 46 | 1.5.1.1.2.3 | Implementar RF07 – Consultar cliente | 0.25d | 2020-06-29 A | 2020-06-30 A |  | 100% |  | 2020-06-29 | 2020-06-30 | 0.38d |  |  | José | 2h | 2h | 200 | 300 | 200 |
| 47 | 1.5.1.1.2.4 | Implementar RF08 – Remover cliente | 0.25d | 2020-06-11 A | 2020-06-11 A |  | 100% |  | 2020-06-04 | 2020-07-01 | 0.5d |  |  | José | 2h | 2h | 200 | 400 | 200 |
| 48 | 1.5.1.2 | **Teste** | 3d | 2020-06-29 A | 2020-07-02 A |  | 100% |  | 2020-06-29 | 2020-07-07 | 6.12d |  |  |  | 4h | 4h | 400 | 1,200 | 400 |
| 49 | 1.5.1.2.1 | Testar RFC01 – Manter Funcionários | 0.56d | 2020-06-29 A | 2020-06-30 A | 38 | 100% |  | 2020-06-29 | 2020-07-01 | 1.12d |  |  | Fernando | 2h | 2h | 200 | 400 | 200 |
| 50 | 1.5.1.2.2 | Testar RFC02 – Manter Clientes | 0.56d | 2020-07-01 A | 2020-07-02 A | 43 | 100% |  | 2020-07-02 | 2020-07-06 | 1.12d |  |  | Fernando | 2h | 2h | 200 | 400 | 200 |
| 51 | 1.5.2 | **Release 02** | 23.75d | 2020-06-04 | 2020-07-08 |  |  |  | 2020-06-04 | 2020-07-08 | 23.75d | 7.28d |  |  | 32h |  | 3,200 | 3,000 |  |
| 52 | 1.5.2.1 | **Implementação** | 18.75d | 2020-06-04 | 2020-07-01 |  |  |  | 2020-06-04 | 2020-06-22 | 11.87d | 10.15d |  |  | 25h |  | 2,500 | 2,400 |  |
| 53 | 1.5.2.1.1 | **Implementar RFC03 – Manter Veículos** | 18.75d | 2020-06-04 | 2020-07-01 |  |  |  | 2020-06-04 | 2020-07-01 | 18.87d | 10.15d | 0d |  | 13h |  | 1,300 | 1,300 |  |
| 54 | 1.5.2.1.1.1 | Implementar RF09 – Incluir veículos | 0.38d | 2020-06-08 | 2020-06-09 |  |  |  | 2020-06-08 | 2020-06-09 | 0.38d | 26.03d |  | João | 3h |  | 300 | 300 |  |
| 55 | 1.5.2.1.1.2 | Implementar RF10 – Editar veículo | 0.38d | 2020-06-09 | 2020-06-29 |  |  |  | 2020-06-09 | 2020-06-29 | 0.38d | 12.15d |  | João | 3h |  | 300 | 300 |  |
| 56 | 1.5.2.1.1.3 | Implementar RF11 – Consultar veículo | 0.38d | 2020-06-29 | 2020-06-30 |  |  |  | 2020-06-30 | 2020-07-01 | 0.38d | 11.15d |  | João | 3h |  | 300 | 300 |  |
| 57 | 1.5.2.1.1.4 | Implementar RF12 – Remover veículo | 0.5d | 2020-06-04 | 2020-07-01 |  |  |  | 2020-06-04 | 2020-07-01 | 0.5d | 10.15d |  | João | 4h |  | 400 | 400 |  |

| ID | WBS | Task | Duration | Start | Finish | Predecessors | Baseline start | Baseline finish | Baseline duration | Total slack | Free slack | Resources | Work | Cost | Baseline cost |
| --- | --- | --- | --- | --- | --- | --- | --- | --- | --- | --- | --- | --- | --- | --- | --- |
| 58 | 1.5.2.1.2 | **Implementar RFC04 – Manter Estoque** | 7.12d | 2020-06-11 | 2020-06-22 |  | 2020-06-11 | 2020-06-22 | 7.12d | 7.97d | 0.88d |  | 12h | 1,200 | 1,200 |
| 59 | 1.5.2.1.2.1 | Implementar RF13 – Incluir peça | 0.38d | 2020-06-11 | 2020-06-11 |  | 2020-06-11 | 2020-06-11 | 0.38d | 14.22d |  | Jubeto | 3h | 300 | 300 |
| 60 | 1.5.2.1.2.2 | Implementar RF14 – Editar peça | 0.38d | 2020-06-11 | 2020-06-12 |  | 2020-06-11 | 2020-06-12 | 0.38d | 13.9d |  | Jubeto | 3h | 300 | 300 |
| 61 | 1.5.2.1.2.3 | Implementar RF15– Consultar peça | 0.38d | 2020-06-19 | 2020-06-22 |  | 2020-06-19 | 2020-06-22 | 0.38d | 7.97d |  | Jubeto | 3h | 300 | 300 |
| 62 | 1.5.2.1.2.4 | Implementar RF16 – Remover peça | 0.38d | 2020-06-15 | 2020-06-16 |  | 2020-06-15 | 2020-06-16 | 0.38d | 12.09d |  | Jubeto | 3h | 300 | 300 |
| 63 | 1.5.2.2 | **Teste** | 5d | 2020-07-01 | 2020-07-08 |  | 2020-06-24 | 2020-07-08 | 9.75d | 7.28d |  |  | 7h | 700 | 600 |
| 64 | 1.5.2.2.1 | Testar RFC03 – Manter Veículos | 1.12d | 2020-07-01 | 2020-07-03 | 53 | 2020-07-02 | 2020-07-07 | 1.12d | 10.15d |  | Fernando | 4h | 400 | 400 |
| 65 | 1.5.2.2.2 | Testar RFC04 – Manter Estoque | 1.12d | 2020-07-06 | 2020-07-08 | 58 | 2020-07-06 | 2020-07-08 | 1.12d | 7.15d |  | João | 3h | 300 | 300 |
| 66 | 1.5.3 | **Release 03** | 23.94d | 2020-06-04 | 2020-07-08 |  | 2020-06-05 | 2020-06-30 | 17.06d | 7.09d |  |  | 30h | 3,000 | 3,000 |
| 67 | 1.5.3.1 | **Implementação** | 17.81d | 2020-06-04 | 2020-06-30 |  | 2020-06-05 | 2020-06-16 | 7.12d | 13.22d |  |  | 24h | 2,400 | 2,400 |
| 68 | 1.5.3.1.1 | **Implementar RFC06 – Manter Agendamentos** | 3d | 2020-06-11 | 2020-06-16 |  | 2020-06-11 | 2020-06-16 | 3d | 20.88d |  |  | 12h | 1,200 | 1,200 |
| 69 | 1.5.3.1.1.1 | Implementar RF17 – Incluir agendamento | 0.38d | 2020-06-11 | 2020-06-12 |  | 2020-06-11 | 2020-06-12 | 0.38d | 25.28d |  | Fernando | 3h | 300 | 300 |
| 70 | 1.5.3.1.1.2 | Implementar RF18 – Editar agendamento | 0.38d | 2020-06-12 | 2020-06-12 |  | 2020-06-12 | 2020-06-12 | 0.38d | 24.9d |  | Fernando | 3h | 300 | 300 |
| 71 | 1.5.3.1.1.3 | Implementar RF19 – Consultar agendamento | 0.38d | 2020-06-15 | 2020-06-15 |  | 2020-06-15 | 2020-06-15 | 0.38d | 24d |  | Fernando | 3h | 300 | 300 |
| 72 | 1.5.3.1.1.4 | Implementar RF20 – Remover agendamento | 0.38d | 2020-06-15 | 2020-06-16 |  | 2020-06-15 | 2020-06-16 | 0.38d | 18.25d | 0d | Fernando | 3h | 300 | 300 |
| 73 | 1.5.3.1.2 | **Implementar RFC08 – Realizar Orçamento** | 17.81d | 2020-06-04 | 2020-06-30 |  | 2020-06-11 | 2020-06-15 | 2.38d | 7.09d | 0d |  | 12h | 1,200 | 1,200 |
| 74 | 1.5.3.1.2.1 | Implementar RF21 – Incluir orçamento | 0.38d | 2020-06-12 | 2020-06-15 |  | 2020-06-11 | 2020-06-11 | 0.38d | 18.15d |  | José | 3h | 300 | 300 |
| 75 | 1.5.3.1.2.2 | Implementar RF22 – Editar orçamento | 0.38d | 2020-06-15 | 2020-06-15 |  | 2020-06-11 | 2020-06-12 | 0.38d | 17.28d |  | José | 3h | 300 | 300 |
| 76 | 1.5.3.1.2.3 | Implementar RF23 – Consultar orçamento | 0.38d | 2020-06-24 | 2020-06-30 |  | 2020-06-12 | 2020-06-15 | 0.38d | 7.09d |  | José | 3h | 300 | 300 |
| 77 | 1.5.3.1.2.4 | Implementar RF24 – Remover orçamento | 0.38d | 2020-06-04 | 2020-06-18 |  | 2020-06-15 | 2020-06-15 | 0.38d | 14.9d |  | José | 3h | 300 | 300 |
| 78 | 1.5.3.2 | **Teste** | 13.94d | 2020-06-18 | 2020-07-08 |  | 2020-06-18 | 2020-06-30 | 8.06d | 7.09d |  |  | 6h | 600 | 600 |
| 79 | 1.5.3.2.1 | Testar RFC 06 – Manter Agendamentos | 1.12d | 2020-06-18 | 2020-06-24 | 72 | 2020-06-18 | 2020-06-24 | 2.12d | 16.9d |  | José | 3h | 300 | 300 |
| 80 | 1.5.3.2.2 | Testar RFC 08 – Realizar Orçamento | 1.12d | 2020-06-30 | 2020-07-08 | 73 | 2020-06-16 | 2020-06-18 | 1.12d | 7.09d |  | Jubeto | 3h | 300 | 300 |
| 81 | 1.5.4 | **Release 04** | 31.28d | 2020-06-04 | 2020-07-17 |  | 2020-06-04 | 2020-07-02 | 20.12d | 0d |  |  | 45h | 4,500 | 3,000 |
| 82 | 1.5.4.1 | **Implementação** | 19.03d | 2020-06-04 | 2020-07-01 |  | 2020-06-04 | 2020-06-24 | 14.31d | 0.25d |  |  | 36h | 3,600 | 2,400 |
| 83 | 1.5.4.1.1 | Implementar RFC05 – Emitir Contas | 1.5d | 2020-06-04 | 2020-07-01 |  | 2020-06-04 | 2020-06-10 | 1.5d | 0d |  | José | 12h | 1,200 | 1,200 |
| 84 | 1.5.4.1.2 | Implementar RFC07 – Buscar Veículos | 1.5d | 2020-06-04 | 2020-06-11 |  | 2020-06-05 | 2020-06-11 | 3.44d | 17.03d | 0d | Jubeto | 12h | 1,200 | 1,200 |

| ID | WBS | Task | Type | Duration | Start | Finish | Predecessors | Baseline start | Baseline finish | Baseline duration | Total slack | Free slack | Resources | Work | Cost | Baseline cost |
| --- | --- | --- | --- | --- | --- | --- | --- | --- | --- | --- | --- | --- | --- | --- | --- | --- |
| 85 | 1.5.4.1.3 | **Implementar RFC09 – Emitir relatórios** |  | 14.31d | 2020-06-04 | 2020-06-24 |  | 2020-06-04 | 2020-06-24 | 14.31d | 14.34d | 0d |  | 12h | 1,200 | 1,200 |
| 86 | 1.5.4.1.3.1 | Implementar RF25 – Emitir Relatório de atendimentos |  | 0.75d | 2020-06-04 | 2020-06-24 |  | 2020-06-04 | 2020-06-24 | 0.75d | 14.34d |  | João | 6h | 600 | 600 |
| 87 | 1.5.4.1.3.2 | Implementar RF26 – Emitir relatório de contas |  | 1.25d | 2020-06-04 | 2020-06-05 |  | 2020-06-04 | 2020-06-05 | 1.25d | 27.9d |  | Fernando | 6h | 600 | 600 |
| 88 | 1.5.4.2 | **Teste** |  | 26.28d | 2020-06-11 | 2020-07-17 |  | 2020-06-16 | 2020-07-02 | 12.12d | 0d |  |  | 9h | 900 | 600 |
| 89 | 1.5.4.2.1 | Testar RFC 05 – Emitir Contas |  | 1.12d | 2020-07-15 | 2020-07-17 | 83 | 2020-06-24 | 2020-06-26 | 1.12d | 0d |  | João | 3h | 300 | 300 |
| 90 | 1.5.4.2.2 | Testar RFC 07 – Buscar Veículos |  | 1.12d | 2020-06-11 | 2020-06-24 | 84 | 2020-06-24 | 2020-06-30 | 1.12d | 17.03d |  | José | 3h | 300 | 300 |
| 91 | 1.5.4.2.3 | Testar RFC 09 – Emitir relatórios |  | 1.12d | 2020-06-24 | 2020-06-29 | 85 | 2020-06-30 | 2020-07-02 | 1.12d | 14.28d |  | Jubeto | 3h | 300 | 300 |
| 92 | 1.6 | **Monitoramento e Controle** |  | 6.12d | 2020-06-10 | 2020-06-18 |  | 2020-06-10 | 2020-06-18 | 6.12d | 21.03d |  |  | 6h | 600 | 600 |
| 93 | 1.6.1 | Acompanhar Projeto |  | 0.75d | 2020-06-10 | 2020-06-18 |  | 2020-06-10 | 2020-06-18 | 0.75d | 21.03d |  | João | 6h | 600 | 600 |
| 94 | 1.7 | **Gerencia de Configuração** |  | 1.12d | 2020-06-16 | 2020-06-17 |  | 2020-06-16 | 2020-06-17 | 1.12d | 22.03d |  |  |  |  |  |
| 95 | 1.7.1 | Elaborar Branch | milestone | 0d | 2020-06-16 | 2020-06-16 |  | 2020-06-16 | 2020-06-16 | 0d | 22.03d | 0d | José |  |  |  |
| 96 | 1.7.2 | Elaborar Merge da Branch X para a Trunk | milestone | 0d | 2020-06-17 | 2020-06-17 | 95 | 2020-06-17 | 2020-06-17 | 0d | 22.15d |  | Jubeto |  |  |  |
| 97 | 1.8 | Fechamento |  | 2.12d | 2020-06-18 | 2020-06-24 |  | 2020-06-18 | 2020-06-24 | 2.12d | 17.03d |  | João | 17h | 1,700 | 1,700 |
| 98 | 1.9 | Controle de Mudanças |  | 1.12d | 2020-06-16 | 2020-06-18 |  | 2020-06-16 | 2020-06-18 | 1.12d | 21.15d |  | José | 9h | 900 | 900 |
