# CRO-CronogramaV3

Schedule from MS Project, 2020-06-04 to 2020-07-10, costs in R$, A marks actual dates.

## Calendars

- Padrão: Mon-Fri 09:00-12:00, 13:00-18:00; Sat-Sun off.

## Resources

| Resource | Rate |
| --- | --- |
| José | 100 |
| João | 100 |
| Jubeto | 100 |
| Cliente |  |
| GP Externo | 200 |
| Fernando | 100 |

## Schedule

| ID | WBS | Task | Type | Duration | Start | Finish | Predecessors | Complete | Remaining | Baseline start | Baseline finish | Baseline duration | Total slack | Resources | Work | Actual work | Cost | Baseline cost | Actual cost |
| --- | --- | --- | --- | --- | --- | --- | --- | --- | --- | --- | --- | --- | --- | --- | --- | --- | --- | --- | --- |
| 1 | 1 | **Projeto Oficina Mecânica** |  | 26d | 2020-06-04 09:00 A | 2020-07-10 08:59 |  | 53% | 12.29d | 2020-06-04 09:00 | 2020-07-13 08:59 | 27d | 0d |  | 148h | 77.25h | 14,849.96 | 25,500 | 7,774.96 |
| 2 | 1.1 | **Prospecção** |  | 3.06d | 2020-06-04 09:00 A | 2020-06-09 09:30 |  | 88% | 0.38d | 2020-06-04 09:00 | 2020-06-09 09:00 | 3d | 22.94d |  | 10.5h | 9.25h | 1,100 | 1,300 | 975 |
| 3 | 1.1.1 | **PETEC** |  | 1.38d | 2020-06-04 09:00 A | 2020-06-05 12:00 A |  | 100% |  | 2020-06-04 09:00 | 2020-06-05 12:00 | 1.38d |  |  | 5.5h | 5.5h | 550 | 700 | 550 |
| 4 | 1.1.1.1 | Estudar Dominio de Aplicação |  | 0.12d | 2020-06-04 09:00 A | 2020-06-04 10:00 A |  | 100% |  | 2020-06-04 09:00 | 2020-06-04 10:00 | 0.12d |  | José | 1h | 1h | 100 | 100 | 100 |
| 5 | 1.1.1.2 | Reunir-se com Fornecedor de Requisitos |  | 0.12d | 2020-06-04 10:00 A | 2020-06-04 11:00 A | 4 | 100% |  | 2020-06-04 10:00 | 2020-06-04 11:00 | 0.12d |  | José | 1h | 1h | 100 | 100 | 100 |
| 6 | 1.1.1.3 | Redigir PETEC |  | 0.38d | 2020-06-04 11:00 A | 2020-06-05 10:00 A | 5 | 100% |  | 2020-06-04 11:00 | 2020-06-05 11:00 | 0.5d |  | João | 3h | 3h | 300 | 400 | 300 |
| 7 | 1.1.1.4 | Revisar Proposta Técnica |  | 0.06d | 2020-06-05 11:00 A | 2020-06-05 11:30 A | 6 | 100% |  | 2020-06-05 11:00 | 2020-06-05 12:00 | 0.12d |  | Jubeto | 0.5h | 0.5h | 50 | 100 | 50 |
| 8 | 1.1.1.5 | Aprovar PTEC | milestone | 0d | 2020-06-05 12:00 A | 2020-06-05 12:00 A | 7 | 100% |  | 2020-06-05 12:00 | 2020-06-05 12:00 | 0d |  | Cliente |  |  |  |  |  |
| 9 | 1.1.2 | **Est. Prel. Tam.** |  | 0.06d | 2020-06-08 08:00 A | 2020-06-08 09:30 A |  | 100% |  | 2020-06-08 08:00 | 2020-06-08 10:00 | 0.12d |  |  | 1.5h | 1.5h | 200 | 300 | 200 |
| 10 | 1.1.2.1 | Estimar Tamanho do Projeto |  | 0.06d | 2020-06-08 08:00 A | 2020-06-08 08:30 A | 7 | 100% |  | 2020-06-08 08:00 | 2020-06-08 08:30 | 0.06d |  | João; Jubeto | 1h | 1h | 100 | 100 | 100 |
| 11 | 1.1.2.2 | Revisar Estimativa de Tamanho do projeto |  | 0.06d | 2020-06-08 09:00 A | 2020-06-08 09:30 A | 10 | 100% |  | 2020-06-08 09:00 | 2020-06-08 10:00 | 0.12d |  | GP Externo | 0.5h | 0.5h | 100 | 200 | 100 |
| 12 | 1.1.3 | **Est. Prel. Cronograma e Orçamento** |  | 0.94d | 2020-06-08 10:00 A | 2020-06-09 09:30 |  | 64% | 0.33d | 2020-06-08 10:00 | 2020-06-09 09:00 | 0.88d | 22.94d |  | 3.5h | 2.25h | 350 | 300 | 225 |
| 13 | 1.1.3.1 | Elaborar Cronograma e Orçamento Preliminares |  | 0.25d | 2020-06-08 10:00 A | 2020-06-08 12:00 A | 9 | 100% |  | 2020-06-08 10:00 | 2020-06-08 12:00 | 0.25d |  | Jubeto | 2h | 2h | 200 | 200 | 200 |
| 14 | 1.1.3.2 | Revisar Cronograma e Orçamento Preliminares |  | 0.19d | 2020-06-09 08:00 A | 2020-06-09 09:30 | 13 | 17% | 0.16d | 2020-06-09 08:00 | 2020-06-09 09:00 | 0.12d | 22.94d | Fernando | 1.5h | 0.25h | 150 | 100 | 25 |
| 15 | 1.2 | **Análise** |  | 11.06d | 2020-06-09 09:00 A | 2020-06-24 09:29 |  | 94% | 0.71d | 2020-06-09 09:00 | 2020-06-24 10:59 | 11.25d | 11.94d |  | 27h | 25.5h | 2,699.96 | 4,200 | 2,549.96 |
| 16 | 1.2.1 | **Documento de Requisitos** |  | 8.25d | 2020-06-09 09:00 A | 2020-06-19 10:59 |  | 92% | 0.67d | 2020-06-09 09:00 | 2020-06-19 10:59 | 8.25d | 14.75d |  | 21h | 19.5h | 2,099.96 | 3,000 | 1,949.96 |
| 17 | 1.2.1.1 | Reunir-se com Cliente |  | 0.25d | 2020-06-09 09:00 A | 2020-06-09 11:00 A | 14 | 100% |  | 2020-06-09 09:00 | 2020-06-10 10:00 | 0.62d |  | José | 2h | 2h | 200 | 500 | 200 |
| 18 | 1.2.1.2 | Elaborar DRE |  | 1.87d | 2020-06-10 10:00 A | 2020-06-16 08:59 A | 17 | 100% |  | 2020-06-10 10:00 | 2020-06-17 09:59 | 2.5d |  | João | 15h | 15h | 1,499.96 | 2,000 | 1,499.96 |
| 19 | 1.2.1.3 | Revisar DRE |  | 0.8d | 2020-06-17 09:59 A | 2020-06-19 08:23 | 18 | 70% | 0.24d | 2020-06-17 09:59 | 2020-06-19 10:59 | 1.12d | 15d | Jubeto | 4h | 2.5h | 400 | 500 | 250 |
| 20 | 1.2.1.4 | Submeter DRE Para Aprovação do Cliente | milestone | 0d | 2020-06-19 10:59 A | 2020-06-19 10:59 A | 19 | 100% |  | 2020-06-19 10:59 | 2020-06-19 10:59 | 0d |  | Jubeto |  |  |  |  |  |
| 21 | 1.2.2 | **MRB** |  | 2.81d | 2020-06-19 10:59 A | 2020-06-24 09:29 A |  | 100% |  | 2020-06-19 10:59 | 2020-06-24 10:59 | 3d |  |  | 6h | 6h | 600 | 1,200 | 600 |
| 22 | 1.2.2.1 | Elaborar MRB |  | 0.56d | 2020-06-19 10:59 A | 2020-06-22 11:29 A | 20 | 100% |  | 2020-06-19 10:59 | 2020-06-23 11:59 | 1.12d |  | José | 4.5h | 4.5h | 450 | 900 | 450 |
| 23 | 1.2.2.2 | Revisar MRB |  | 0.19d | 2020-06-23 11:59 A | 2020-06-24 09:29 A | 22 | 100% |  | 2020-06-23 11:59 | 2020-06-24 10:59 | 0.38d |  | Fernando | 1.5h | 1.5h | 150 | 300 | 150 |
| 24 | 1.3 | **Projeto** |  | 7d | 2020-06-24 10:59 A | 2020-07-03 10:59 |  | 69% | 2.15d | 2020-06-24 10:59 | 2020-07-06 10:59 | 8d | 4.75d |  | 8.5h | 4.5h | 850 | 1,000 | 450 |
| 25 | 1.3.1 | **Diagrama de Classes** |  | 5d | 2020-06-24 10:59 A | 2020-07-01 10:59 A |  | 100% |  | 2020-06-24 10:59 | 2020-07-02 10:59 | 6d |  |  | 4.5h | 4.5h | 450 | 600 | 450 |
| 26 | 1.3.1.1 | Elaborar Diagrama de Classe |  | 0.75d | 2020-06-24 10:59 A | 2020-06-26 08:59 A | 23 | 100% |  | 2020-06-24 10:59 | 2020-06-26 10:59 | 1d |  | José [50%] | 3h | 3h | 300 | 400 | 300 |
| 27 | 1.3.1.2 | Revisar Diagrama de Classe |  | 1d | 2020-06-26 10:59 A | 2020-06-30 10:59 A | 26 | 100% |  | 2020-06-26 10:59 | 2020-06-30 10:59 | 1d |  | João [12.5%] | 1h | 1h | 100 | 100 | 100 |
| 28 | 1.3.1.3 | Atualizar MRB |  | 0.5d | 2020-06-30 10:59 A | 2020-07-01 10:59 A | 27 | 100% |  | 2020-06-30 10:59 | 2020-07-02 10:59 | 1d |  | José [12.5%] | 0.5h | 0.5h | 50 | 100 | 50 |

| ID | WBS | Task | Duration | Start | Finish | Predecessors | Complete | Remaining | Baseline start | Baseline finish | Baseline duration | Total slack | Resources | Work | Actual work | Cost | Baseline cost | Actual cost |
| --- | --- | --- | --- | --- | --- | --- | --- | --- | --- | --- | --- | --- | --- | --- | --- | --- | --- | --- |
| 29 | 1.3.2 | **Modelo Entidade Relacionamento** | 2d | 2020-07-01 10:59 | 2020-07-03 10:59 |  |  |  | 2020-07-02 10:59 | 2020-07-06 10:59 | 2d | 0d |  | 4h |  | 400 | 400 |  |
| 30 | 1.3.2.1 | Elaborar Mer | 0.5d | 2020-07-01 10:59 | 2020-07-02 10:59 | 28 |  |  | 2020-07-02 10:59 | 2020-07-03 10:59 | 0.5d | 0d | Jubeto | 3h |  | 300 | 300 |  |
| 31 | 1.3.2.2 | Revisar Mer | 0.5d | 2020-07-02 10:59 | 2020-07-03 10:59 | 30 |  |  | 2020-07-03 10:59 | 2020-07-06 10:59 | 0.5d | 4.75d | Fernando | 1h |  | 100 | 100 |  |
| 32 | 1.4 | **Planejamento** | 5.75d | 2020-07-02 10:59 | 2020-07-10 08:59 |  |  |  | 2020-07-03 10:59 | 2020-07-13 08:59 | 5.75d | 0d |  | 17h |  | 1,700 | 1,700 |  |
| 33 | 1.4.1 | Desenvolver Planejamento | 1.75d | 2020-07-02 10:59 | 2020-07-08 08:59 | 30 |  |  | 2020-07-03 10:59 | 2020-07-09 08:59 | 1.75d | 0d | Jubeto | 14h |  | 1,400 | 1,400 |  |
| 34 | 1.4.2 | Revisar Planejamento | 1d | 2020-07-08 08:59 | 2020-07-10 08:59 | 33 |  |  | 2020-07-09 08:59 | 2020-07-13 08:59 | 1d | 0d | José [37.5%] | 3h |  | 300 | 300 |  |
| 35 | 1.5 | **Desenvolvimento** | 22.25d | 2020-06-04 09:00 A | 2020-07-06 11:00 |  | 65% | 7.81d | 2020-06-04 09:00 | 2020-07-08 09:00 | 24d | 3.75d |  | 53h | 38h | 5,300 | 14,100 | 3,800 |
| 36 | 1.5.1 | **Release 01** | 17d | 2020-06-09 09:00 A | 2020-07-02 08:30 A |  | 100% |  | 2020-06-04 09:00 | 2020-07-07 10:00 | 23.12d |  |  | 20h | 20h | 2,000 | 5,100 | 2,000 |
| 37 | 1.5.1.1 | **Implementação** | 15.12d | 2020-06-09 09:00 A | 2020-06-30 09:59 A |  | 100% |  | 2020-06-04 09:00 | 2020-07-01 09:59 | 19.12d |  |  | 16h | 16h | 1,600 | 3,900 | 1,600 |
| 38 | 1.5.1.1.1 | **Implementar RFC01 – Manter Funcionários** | 10.25d | 2020-06-09 09:00 A | 2020-06-23 10:59 A |  | 100% |  | 2020-06-04 09:00 | 2020-06-24 08:29 | 14d |  |  | 8h | 8h | 800 | 1,300 | 800 |
| 39 | 1.5.1.1.1.1 | Implementar RF01 – Incluir funcionário | 0.25d | 2020-06-12 10:30 A | 2020-06-19 11:29 A |  | 100% |  | 2020-06-12 10:30 | 2020-06-24 08:29 | 0.38d |  | Jubeto | 2h | 2h | 200 | 300 | 200 |
| 40 | 1.5.1.1.1.2 | Implementar RF02 – Editar funcionário | 0.25d | 2020-06-22 09:59 A | 2020-06-22 11:59 A |  | 100% |  | 2020-06-22 09:59 | 2020-06-23 08:59 | 0.38d |  | Jubeto | 2h | 2h | 200 | 300 | 200 |
| 41 | 1.5.1.1.1.3 | Implementar RF03 – Consultar funcionário | 0.25d | 2020-06-23 08:59 A | 2020-06-23 10:59 A |  | 100% |  | 2020-06-23 08:59 | 2020-06-23 11:59 | 0.38d |  | Jubeto | 2h | 2h | 200 | 300 | 200 |
| 42 | 1.5.1.1.1.4 | Implementar RF04 – Remover funcionário | 0.25d | 2020-06-09 09:00 A | 2020-06-09 11:00 A |  | 100% |  | 2020-06-04 09:00 | 2020-06-05 09:00 | 1d |  | Jubeto | 2h | 2h | 200 | 400 | 200 |
| 43 | 1.5.1.1.2 | **Implementar RFC02 – Manter Clientes** | 13d | 2020-06-11 10:00 A | 2020-06-30 09:59 A |  | 100% |  | 2020-06-04 11:00 | 2020-07-01 09:59 | 18.87d |  |  | 8h | 8h | 800 | 1,300 | 800 |
| 44 | 1.5.1.1.2.1 | Implementar RF05 – Incluir clientes | 0.25d | 2020-06-24 10:59 A | 2020-06-26 08:29 A |  | 100% |  | 2020-06-24 10:59 | 2020-06-26 09:29 | 0.38d |  | José | 2h | 2h | 200 | 300 | 200 |
| 45 | 1.5.1.1.2.2 | Implementar RF06 – Editar cliente | 0.25d | 2020-06-26 10:59 A | 2020-06-29 08:59 A |  | 100% |  | 2020-06-26 10:59 | 2020-06-29 09:59 | 0.38d |  | José | 2h | 2h | 200 | 300 | 200 |
| 46 | 1.5.1.1.2.3 | Implementar RF07 – Consultar cliente | 0.25d | 2020-06-29 09:59 A | 2020-06-30 09:59 A |  | 100% |  | 2020-06-29 09:59 | 2020-06-30 10:59 | 0.38d |  | José | 2h | 2h | 200 | 300 | 200 |
| 47 | 1.5.1.1.2.4 | Implementar RF08 – Remover cliente | 0.25d | 2020-06-11 10:00 A | 2020-06-11 12:00 A |  | 100% |  | 2020-06-04 11:00 | 2020-07-01 09:59 | 0.5d |  | José | 2h | 2h | 200 | 400 | 200 |
| 48 | 1.5.1.2 | **Teste** | 3d | 2020-06-29 08:00 A | 2020-07-02 08:30 A |  | 100% |  | 2020-06-29 08:00 | 2020-07-07 10:00 | 6.12d |  |  | 4h | 4h | 400 | 1,200 | 400 |
| 49 | 1.5.1.2.1 | Testar RFC01 – Manter Funcionários | 0.56d | 2020-06-29 08:00 A | 2020-06-30 08:30 A | 38 | 100% |  | 2020-06-29 08:00 | 2020-07-01 09:00 | 1.12d |  | Fernando | 2h | 2h | 200 | 400 | 200 |
| 50 | 1.5.1.2.2 | Testar RFC02 – Manter Clientes | 0.56d | 2020-07-01 08:00 A | 2020-07-02 08:30 A | 43 | 100% |  | 2020-07-02 08:00 | 2020-07-06 10:00 | 1.12d |  | Fernando | 2h | 2h | 200 | 400 | 200 |
| 51 | 1.5.2 | **Release 02** | 22d | 2020-06-04 11:00 A | 2020-07-06 11:00 A |  | 100% |  | 2020-06-04 11:00 | 2020-07-08 09:00 | 23.75d |  |  | 18h | 18h | 1,800 | 3,000 | 1,800 |
| 52 | 1.5.2.1 | **Implementação** | 17.93d | 2020-06-04 11:00 A | 2020-06-30 10:24 A |  | 100% |  | 2020-06-04 11:00 | 2020-06-22 09:59 | 11.87d |  |  | 16h | 16h | 1,600 | 2,400 | 1,600 |
| 53 | 1.5.2.1.1 | **Implementar RFC03 – Manter Veículos** | 17.93d | 2020-06-04 11:00 A | 2020-06-30 10:24 A |  | 100% |  | 2020-06-04 11:00 | 2020-07-01 09:59 | 18.87d |  |  | 8h | 8h | 800 | 1,300 | 800 |
| 54 | 1.5.2.1.1.1 | Implementar RF09 – Incluir veículos | 0.25d | 2020-06-08 11:00 A | 2020-06-09 09:00 A |  | 100% |  | 2020-06-08 11:00 | 2020-06-09 10:00 | 0.38d |  | João | 2h | 2h | 200 | 300 | 200 |
| 55 | 1.5.2.1.1.2 | Implementar RF10 – Editar veículo | 0.25d | 2020-06-09 10:00 A | 2020-06-09 12:00 A |  | 100% |  | 2020-06-09 10:00 | 2020-06-29 08:59 | 0.38d |  | João | 2h | 2h | 200 | 300 | 200 |
| 56 | 1.5.2.1.1.3 | Implementar RF11 – Consultar veículo | 0.25d | 2020-06-29 09:42 A | 2020-06-29 11:42 A |  | 100% |  | 2020-06-30 10:59 | 2020-07-01 09:59 | 0.38d |  | João | 2h | 2h | 200 | 300 | 200 |
| 57 | 1.5.2.1.1.4 | Implementar RF12 – Remover veículo | 0.25d | 2020-06-04 11:00 A | 2020-06-30 10:24 A |  | 100% |  | 2020-06-04 11:00 | 2020-07-01 09:59 | 0.5d |  | João | 2h | 2h | 200 | 400 | 200 |

| ID | WBS | Task | Type | Duration | Start | Finish | Predecessors | Complete | Baseline start | Baseline finish | Baseline duration | Total slack | Free slack | Resources | Work | Actual work | Cost | Baseline cost | Actual cost |
| --- | --- | --- | --- | --- | --- | --- | --- | --- | --- | --- | --- | --- | --- | --- | --- | --- | --- | --- | --- |
| 58 | 1.5.2.1.2 | **Implementar RFC04 – Manter Estoque** |  | 7d | 2020-06-11 08:30 A | 2020-06-22 08:59 A |  | 100% | 2020-06-11 08:30 | 2020-06-22 09:59 | 7.12d |  |  |  | 8h | 8h | 800 | 1,200 | 800 |
| 59 | 1.5.2.1.2.1 | Implementar RF13 – Incluir peça |  | 0.25d | 2020-06-11 08:30 A | 2020-06-11 10:30 A |  | 100% | 2020-06-11 08:30 | 2020-06-11 11:30 | 0.38d |  |  | Jubeto | 2h | 2h | 200 | 300 | 200 |
| 60 | 1.5.2.1.2.2 | Implementar RF14 – Editar peça |  | 0.25d | 2020-06-11 11:30 A | 2020-06-12 09:30 A |  | 100% | 2020-06-11 11:30 | 2020-06-12 10:30 | 0.38d |  |  | Jubeto | 2h | 2h | 200 | 300 | 200 |
| 61 | 1.5.2.1.2.3 | Implementar RF15– Consultar peça |  | 0.25d | 2020-06-19 10:59 A | 2020-06-22 08:59 A |  | 100% | 2020-06-19 10:59 | 2020-06-22 09:59 | 0.38d |  |  | Jubeto | 2h | 2h | 200 | 300 | 200 |
| 62 | 1.5.2.1.2.4 | Implementar RF16 – Remover peça |  | 0.25d | 2020-06-15 09:30 A | 2020-06-15 11:30 A |  | 100% | 2020-06-15 09:30 | 2020-06-16 08:30 | 0.38d |  |  | Jubeto | 2h | 2h | 200 | 300 | 200 |
| 63 | 1.5.2.2 | **Teste** |  | 3.25d | 2020-07-01 08:24 A | 2020-07-06 11:00 A |  | 100% | 2020-06-24 10:59 | 2020-07-08 09:00 | 9.75d |  |  |  | 2h | 2h | 200 | 600 | 200 |
| 64 | 1.5.2.2.1 | Testar RFC03 – Manter Veículos |  | 0.28d | 2020-07-01 08:24 A | 2020-07-01 10:39 A | 53 | 100% | 2020-07-02 08:00 | 2020-07-07 10:00 | 1.12d |  |  | Fernando | 1h | 1h | 100 | 400 | 100 |
| 65 | 1.5.2.2.2 | Testar RFC04 – Manter Estoque |  | 0.38d | 2020-07-06 08:00 A | 2020-07-06 11:00 A | 58 | 100% | 2020-07-06 08:00 | 2020-07-08 09:00 | 1.12d |  |  | João | 1h | 1h | 100 | 300 | 100 |
| 66 | 1.5.3 | **Release 03** |  | 17d | 2020-06-04 09:00 | 2020-06-29 08:29 |  |  | 2020-06-04 09:00 | 2020-07-02 09:59 | 20.12d | 9d |  |  | 15h |  | 1,500 | 3,000 |  |
| 67 | 1.5.3.1 | **Implementação** |  | 14.31d | 2020-06-04 09:00 | 2020-06-24 11:29 |  |  | 2020-06-04 09:00 | 2020-06-24 11:29 | 14.31d | 9.06d |  |  | 12h |  | 1,200 | 2,400 |  |
| 68 | 1.5.3.1.1 | **Implementar RFC09 – Emitir relatórios** |  | 14.31d | 2020-06-04 09:00 | 2020-06-24 11:29 |  |  | 2020-06-04 09:00 | 2020-06-24 11:29 | 14.31d | 9.06d | 0d |  | 12h |  | 1,200 | 1,200 |  |
| 69 | 1.5.3.1.1.1 | Implementar RF25 – Emitir Relatório de atendimentos |  | 0.75d | 2020-06-04 09:00 | 2020-06-24 11:29 |  |  | 2020-06-04 09:00 | 2020-06-24 11:29 | 0.75d | 9.06d |  | João | 6h |  | 600 | 600 |  |
| 70 | 1.5.3.1.1.2 | Implementar RF26 – Emitir relatório de contas |  | 1.25d | 2020-06-04 09:00 | 2020-06-05 11:00 |  |  | 2020-06-04 09:00 | 2020-06-05 11:00 | 1.25d | 22.12d |  | Fernando | 6h |  | 600 | 600 |  |
| 71 | 1.5.3.2 | **Teste** |  | 2.69d | 2020-06-24 11:29 | 2020-06-29 08:29 |  |  | 2020-06-16 08:00 | 2020-07-02 09:59 | 12.12d | 9d |  |  | 3h |  | 300 | 600 |  |
| 72 | 1.5.3.2.1 | Testar RFC 09 – Emitir relatórios |  | 1.12d | 2020-06-24 11:29 | 2020-06-29 08:29 | 68 |  | 2020-06-30 08:59 | 2020-07-02 09:59 | 1.12d | 9d |  | Jubeto | 3h |  | 300 | 300 |  |
| 73 | 1.6 | **Monitoramento e Controle** |  | 6.12d | 2020-06-10 08:00 | 2020-06-18 09:59 |  |  | 2020-06-10 08:00 | 2020-06-18 09:59 | 6.12d | 15.25d |  |  | 6h |  | 600 | 600 |  |
| 74 | 1.6.1 | Acompanhar Projeto |  | 0.75d | 2020-06-10 08:00 | 2020-06-18 09:59 |  |  | 2020-06-10 08:00 | 2020-06-18 09:59 | 0.75d | 15.25d |  | João | 6h |  | 600 | 600 |  |
| 75 | 1.7 | **Gerencia de Configuração** |  | 1.12d | 2020-06-16 08:00 | 2020-06-17 09:59 |  |  | 2020-06-16 08:00 | 2020-06-17 09:59 | 1.12d | 16.88d |  |  |  |  |  |  |  |
| 76 | 1.7.1 | Elaborar Branch | milestone | 0d | 2020-06-16 08:00 | 2020-06-16 08:00 |  |  | 2020-06-16 08:00 | 2020-06-16 08:00 | 0d | 17d | 0d | José |  |  |  |  |  |
| 77 | 1.7.2 | Elaborar Merge da Branch X para a Trunk | milestone | 0d | 2020-06-17 09:59 | 2020-06-17 09:59 | 76 |  | 2020-06-17 09:59 | 2020-06-17 09:59 | 0d | 16.88d |  | Jubeto |  |  |  |  |  |
| 78 | 1.8 | Fechamento |  | 2.12d | 2020-06-18 09:59 | 2020-06-24 10:59 |  |  | 2020-06-18 09:59 | 2020-06-24 10:59 | 2.12d | 11.25d |  | João | 17h |  | 1,700 | 1,700 |  |
| 79 | 1.9 | Controle de Mudanças |  | 1.12d | 2020-06-16 08:00 | 2020-06-18 09:00 |  |  | 2020-06-16 08:00 | 2020-06-18 09:00 | 1.12d | 15.37d |  | José | 9h |  | 900 | 900 |  |
